# Menta 0.3 research

Schedule from GanttProject, 2012-01-16 to 2012-03-15.
Research project to automate the incident handling.

## Calendars

- Project calendar: Mon-Fri working; Sat-Sun off.

## Resources

| Resource | Group |
| --- | --- |
| Max | Architect |
| Alex | Team lead |
| Adel | Developer |
| Bulat | Developer |
| Renat | Developer |
| Artem | Developer |

## Schedule

| ID | WBS | Task | Type | Duration | Start | Finish | Predecessors | Resources |
| --- | --- | --- | --- | --- | --- | --- | --- | --- |
| 1 | 1 | **Analysis** |  | 11d | 2012-01-16 | 2012-01-30 |  |  |
| 2 | 1.1 | Incidents |  | 5d | 2012-01-16 | 2012-01-20 |  | Bulat; Adel [50%]; Renat; Alex [50%]; Artem |
| 3 | 1.2 | Workbook articles |  | 6d | 2012-01-23 | 2012-01-30 | 2 | Bulat; Adel; Renat; Alex; Artem |
| 4 | 2 | **Design Emotion Machine** |  | 38d | 2012-01-23 | 2012-03-14 |  |  |
| 5 | 2.1 | Inbound textual description |  | 1d | 2012-01-23 | 2012-01-23 |  | Alex |
| 6 | 2.2 | Internal knowledge(atom) representations |  | 8d | 2012-01-23 | 2012-02-01 |  | Max |
| 7 | 2.3 | Formalization outbound structures |  | 6d | 2012-02-02 | 2012-02-09 | 6 | Max |
| 8 | 2.4 | Design Solution HowTo-s |  | 16d | 2012-01-24 | 2012-02-14 | 5 | Alex |
| 9 | 2.5 | Design Critics |  | 12d | 2012-02-10 | 2012-02-27 | 7 | Max |
| 10 | 2.6 | Design Selector |  | 12d | 2012-02-15 | 2012-03-01 | 8 | Alex |
| 11 | 2.7 | Design Way2Think |  | 12d | 2012-02-28 | 2012-03-14 | 9 | Max |
| 12 | 3 | Analysis and design | milestone | 0d | 2012-03-15 | 2012-03-15 | 1, 4 | Alex |
| 13 | 4 | **OpenCog prototype** |  | 31d | 2012-01-31 | 2012-03-13 | 1 |  |
| 14 | 4.1 | **CogBuntu** |  | 3d | 2012-01-31 | 2012-02-02 |  |  |
| 15 | 4.1.1 | Red documentation |  | 1d | 2012-01-31 | 2012-01-31 |  | Bulat; Adel; Renat; Alex; Artem |
| 16 | 4.1.2 | Install CogBuntu |  | 2d | 2012-02-01 | 2012-02-02 | 15 | Bulat; Adel; Renat; Alex; Artem |
| 17 | 4.2 | **AtomSpace Analysis** |  | 22d | 2012-02-03 | 2012-03-05 | 14 | Artem |
| 18 | 4.2.1 | Read documentation |  | 2d | 2012-02-03 | 2012-02-06 |  | Artem |
| 19 | 4.2.2 | Test storage using Cookbook |  | 4d | 2012-02-07 | 2012-02-10 | 18 |  |
| 20 | 4.2.3 | Test storage usability for knowledge representation |  | 16d | 2012-02-13 | 2012-03-05 | 19 |  |
| 21 | 4.3 | **Probability Logic Engines analysis** |  | 22d | 2012-02-03 | 2012-03-05 | 14 | Renat |
| 22 | 4.3.1 | **PLN analysis** |  | 6d | 2012-02-03 | 2012-02-10 |  |  |
| 23 | 4.3.1.1 | Read documentation |  | 2d | 2012-02-03 | 2012-02-06 |  |  |
| 24 | 4.3.1.2 | Test PLN using NARS data |  | 4d | 2012-02-07 | 2012-02-10 | 23 |  |
| 25 | 4.3.2 | Bayesian inference |  | 16d | 2012-02-13 | 2012-03-05 | 24 |  |

| ID | WBS | Task | Duration | Start | Finish | Predecessors | Resources |
| --- | --- | --- | --- | --- | --- | --- | --- |
| 26 | 4.4 | **Embodiment** | 28d | 2012-02-03 | 2012-03-13 | 1, 14 | Adel |
| 27 | 4.4.1 | Read documentation | 8d | 2012-02-03 | 2012-02-14 |  |  |
| 28 | 4.4.2 | Test embodiment system to simulate Intellix | 20d | 2012-02-15 | 2012-03-13 | 27 |  |
| 29 | 4.5 | **Natural language processors** | 8d | 2012-02-03 | 2012-02-14 | 14 |  |
| 30 | 4.5.1 | RelEx | 8d | 2012-02-03 | 2012-02-14 |  |  |
| 31 | 4.5.2 | Stanford Parser | 4d | 2012-02-03 | 2012-02-08 |  |  |
| 32 | 4.5.3 | OpenNLP | 6d | 2012-02-03 | 2012-02-10 |  |  |
